# Flubber

Schedule from MS Project, 2017-10-02 to 2018-02-16, costs in ₽.

## Calendars

- Стандартный: Mon-Fri 09:00-13:00, 14:00-18:00; Sat-Sun off.

## Resources

| Resource | Rate |
| --- | --- |
| Project curator | 400 |
| Manager | 350 |
| Analyst | 330 |
| Designer | 280 |
| System Architect | 270 |
| Technical writer | 250 |
| Financier | 240 |
| Tester | 220 |
| Programmer | 150 |
| CEO |  |
| Coolers with water | 1500 |
| Paper | 300 |
| Electricity |  |
| Manager `s assistant | 100 |

## Schedule

| ID | WBS | Task | Type | Duration | Start | Finish | Predecessors | Total slack | Free slack | Constraint | Resources | Work | Cost |
| --- | --- | --- | --- | --- | --- | --- | --- | --- | --- | --- | --- | --- | --- |
| 1 | 1 | **Initiation** |  | 6d | 2017-10-02 | 2017-10-09 |  | 2.5d |  |  |  | 56.5h | 18,220 |
| 2 | 1.1 | **Issue of the order to launch the project** |  | 1d | 2017-10-02 | 2017-10-02 |  | 2.5d |  |  |  | 9h | 4,600 |
| 3 | 1.1.1 | Development of the order to launch the project |  | 4h | 2017-10-02 | 2017-10-02 |  | 2.5d | 0d |  | Manager; Paper; Coolers with water | 4h | 3,200 |
| 4 | 1.1.2 | Approval of the order to launch the project |  | 4h | 2017-10-02 | 2017-10-02 | 3 | 2.5d | 0d |  | CEO [25%]; Manager; Project curator | 5h | 1,400 |
| 5 | 1.1.3 | Milestone: The order to launch the project | milestone | 0d | 2017-10-02 | 2017-10-02 | 4 | 98.75d |  |  |  |  |  |
| 6 | 1.2 | **Collection of requirements** |  | 1d | 2017-10-02 | 2017-10-03 |  | 2.5d |  |  |  | 30.5h | 8,440 |
| 7 | 1.2.1 | Stakeholder analysis |  | 8h | 2017-10-03 | 2017-10-03 | 4 | 2.5d | 0d |  | Analyst; Paper | 8h | 2,940 |
| 8 | 1.2.2 | Definition of project goals and outcomes |  | 2h | 2017-10-03 | 2017-10-03 | 4 | 3.25d | 0.75d |  | Analyst | 2h | 660 |
| 9 | 1.2.3 | Definition of the main characteristics of a project product |  | 8h | 2017-10-03 | 2017-10-03 | 4 | 2.5d | 0d |  | Analyst | 8h | 2,640 |
| 10 | 1.2.4 | Determining the conditions for the implementation of the project |  | 8h | 2017-10-02 | 2017-10-03 | 4 | 2.5d | 0d |  | Project curator; Manager `s assistant | 8h | 800 |
| 11 | 1.2.5 | Determining the delivery of the results of intermediate stages |  | 2h | 2017-10-02 | 2017-10-03 | 4 | 3.25d | 0.75d |  | Project curator; CEO [25%] | 0.5h |  |
| 12 | 1.2.6 | Determining the conditions for interaction between participants |  | 4h | 2017-10-03 | 2017-10-03 | 4 | 3d | 0.5d |  | Manager | 4h | 1,400 |
| 13 | 1.3 | **Development of the Project Charter** |  | 1.5d | 2017-10-02 | 2017-10-04 |  | 2.5d |  |  |  | 5h | 1,300 |
| 14 | 1.3.1 | Development of the Project Charter |  | 1d | 2017-10-02 | 2017-10-03 | 4 | 2.5d | 0d |  | Project curator; Paper; Technical writer [50%] | 4h | 1,300 |
| 15 | 1.3.2 | Harmonization of the Project Charter |  | 4h | 2017-10-03 | 2017-10-04 | 7, 8, 9, 10, 11, 12, 14 | 2.5d | 0d |  | Project curator; CEO [25%] | 1h |  |
| 16 | 1.3.3 | Milestone: Project Charter | milestone | 0d | 2017-10-04 | 2017-10-04 | 15 | 97.25d |  |  |  |  |  |
| 17 | 1.4 | Holding the kick-off meeting for the project | manual | 1d | 2017-10-09 | 2017-10-09 | 15 |  |  |  | Manager; Project curator; System Architect [50%] | 12h | 3,880 |
| 18 | 2 | **Planning** |  | 13.38d | 2017-10-10 | 2017-10-27 |  | -20.12d | 0d | start no earlier than 2017-10-09 |  | 209.5h | 72,159 |
| 19 | 2.1 | Creating a hierarchical structure of project activities |  | 2d | 2017-10-10 | 2017-10-11 | 17 | -20.12d | 0d |  | Manager | 16h | 5,600 |
| 20 | 2.2 | **Project Quality Planning** |  | 6.25d | 2017-10-11 | 2017-10-20 |  | 85.5d |  |  |  | 20.5h | 7,375 |
| 21 | 2.2.1 | Determination the quality of planning |  | 4h | 2017-10-11 | 2017-10-12 | 19 | 90d | 4.5d |  | Analyst | 8h | 4,000 |
| 22 | 2.2.2 | Distribution of responsibility for quality between project participants |  | 5h | 2017-10-19 | 2017-10-19 | 21 | 85.5d | 0d | start no earlier than 2017-10-19 | Manager | 5h | 1,750 |
| 23 | 2.2.3 | Harmonization of the list of standards, procedures and methods for quality assurance and control |  | 5h | 2017-10-19 | 2017-10-20 | 22 | 85.5d | 0d |  | Manager [10%]; Project curator [50%]; Manager `s assistant [90%] | 7.5h | 1,625 |
| 24 | 2.2.4 | Milestone: List of standards, procedures and methods for quality assurance and controlz | milestone | 0d | 2017-10-20 | 2017-10-20 | 23 | 85.5d |  |  |  |  |  |

| ID | WBS | Task | Type | Duration | Start | Finish | Predecessors | Total slack | Free slack | Resources | Work | Cost |
| --- | --- | --- | --- | --- | --- | --- | --- | --- | --- | --- | --- | --- |
| 25 | 2.3 | **Determination the relationship and duration of work** |  | 3.38d | 2017-10-12 | 2017-10-17 |  | -20.12d | 0d |  | 61h | 23,180 |
| 26 | 2.3.1 | Schedule Scheduling |  | 8h | 2017-10-12 | 2017-10-12 | 19 | -20.12d | 0d | Analyst [25%]; Manager | 10h | 3,460 |
| 27 | 2.3.2 | Determination of operations |  | 4h | 2017-10-12 | 2017-10-13 | 26 | -20.12d | 0d | Technical writer [20%]; Analyst | 8.8h | 4,200 |
| 28 | 2.3.3 | Sequence definition |  | 8h | 2017-10-13 | 2017-10-16 | 27 | 88.38d | 0d | Analyst; System Architect; Manager | 16h | 6,160 |
| 29 | 2.3.4 | Evaluation of operation resources |  | 8h | 2017-10-13 | 2017-10-16 | 27 | 88.38d | 0d | Analyst; Manager `s assistant [20%] | 9.6h | 4,160 |
| 30 | 2.3.5 | Evaluation of the duration of operations |  | 8h | 2017-10-13 | 2017-10-16 | 27 | -20.12d | 0d | Technical writer [20%]; Analyst | 9.6h | 4,500 |
| 31 | 2.3.6 | Scheduling |  | 7h | 2017-10-16 | 2017-10-17 | 28, 29, 30 | 88.38d | 0d | Manager `s assistant | 7h | 700 |
| 32 | 2.3.7 | Milestone: Network project model | milestone | 0d | 2017-10-17 | 2017-10-17 | 31 | 88.38d |  |  |  |  |
| 33 | 2.4 | **Project cost management** |  | 1d | 2017-10-12 | 2017-10-12 |  | 90.75d |  |  | 10h | 2,580 |
| 34 | 2.4.1 | Cost Management Planning |  | 4h | 2017-10-12 | 2017-10-12 | 19 | 90.75d | 0d | Financier; Analyst [25%] | 5h | 1,290 |
| 35 | 2.4.2 | The reconciliation of the projected cost of each work of the calendar plan |  | 4h | 2017-10-12 | 2017-10-12 | 34 | 90.75d | 0d | Financier; Analyst [25%] | 5h | 1,290 |
| 36 | 2.4.3 | Milestone: The projected cost of each work of the calendar plan | milestone | 0d | 2017-10-12 | 2017-10-12 | 35 | 90.75d |  |  |  |  |
| 37 | 2.5 | **Assessment of resource requirements** |  | 1.88d | 2017-10-16 | 2017-10-18 |  | -20.12d | 0d |  | 13.6h | 4,760 |
| 38 | 2.5.1 | Defining a resource list |  | 5h | 2017-10-16 | 2017-10-17 | 30 | -20.12d | 0d | Manager; Analyst | 5h | 1,650 |
| 39 | 2.5.2 | Reconciling the resource list |  | 2h | 2017-10-17 | 2017-10-17 | 38 | -20.12d | 0d | Project curator; Manager `s assistant | 2h | 200 |
| 40 | 2.5.3 | Milestone: List of resources | milestone | 0d | 2017-10-17 | 2017-10-17 | 39 | 88.38d |  |  |  |  |
| 41 | 2.5.4 | Create a composite resource plan |  | 4h | 2017-10-17 | 2017-10-17 | 39 | -20.12d | 0d | Manager [30%] | 2.6h | 1,210 |
| 42 | 2.5.5 | Harmonization of the composite resource plan |  | 4h | 2017-10-17 | 2017-10-18 | 41 | -20.12d | 0d | Manager; Project curator | 4h | 1,700 |
| 43 | 2.5.6 | Milestone: Consolidated resource plan | milestone | 0d | 2017-10-18 | 2017-10-18 | 42 | -20.12d | 0d |  |  |  |
| 44 | 2.6 | **Development of a calendar plan** |  | 1d | 2017-10-18 | 2017-10-19 |  | -20.12d | 0d |  | 6h | 2,400 |
| 45 | 2.6.1 | Creation of the calendar plan |  | 4h | 2017-10-18 | 2017-10-18 | 43 | -20.12d | 0d | Manager [50%] | 2h | 1,000 |
| 46 | 2.6.2 | Harmonization of the calendar plan |  | 4h | 2017-10-18 | 2017-10-19 | 45 | -20.12d | 0d | Manager; Project curator | 4h | 1,400 |
| 47 | 2.6.3 | Milestone: Porject calendar plan | milestone | 0d | 2017-10-19 | 2017-10-19 | 46 | 86.38d |  |  |  |  |
| 48 | 2.7 | **Project Risk Management** |  | 3.25d | 2017-10-12 | 2017-10-17 |  | -19.5d | 0d |  | 16h | 4,700 |
| 49 | 2.7.1 | Risk Management Planning |  | 4h | 2017-10-12 | 2017-10-12 | 19 | -19.5d | 0d | Analyst [25%] | 1h | 330 |
| 50 | 2.7.2 | Identification of risks |  | 4h | 2017-10-12 | 2017-10-12 | 49 | -19.5d | 0d | Manager `s assistant | 4h | 400 |
| 51 | 2.7.3 | Qualitative risk analysis |  | 4h | 2017-10-13 | 2017-10-13 | 50 | -19.5d | 0d | Analyst | 4h | 1,320 |
| 52 | 2.7.4 | Quantitative Risk Analysis |  | 4h | 2017-10-13 | 2017-10-13 | 50 | -19.5d | 0d | Analyst | 4h | 1,660 |
| 53 | 2.7.5 | Risk Response Planning |  | 10h | 2017-10-16 | 2017-10-17 | 51, 52 | -18d | 0d | Analyst [30%] | 3h | 990 |
| 54 | 2.7.6 | Milestone: List of identified risks or conditions of their occurrence | milestone | 0d | 2017-10-17 | 2017-10-17 | 53 | 88.5d |  |  |  |  |

| ID | WBS | Task | Type | Duration | Start | Finish | Predecessors | Total slack | Free slack | Constraint | Resources | Work | Cost |
| --- | --- | --- | --- | --- | --- | --- | --- | --- | --- | --- | --- | --- | --- |
| 55 | 2.8 | **Development of the project budget** |  | 3d | 2017-10-19 | 2017-10-24 |  | -20.12d | 0d |  |  | 32h | 8,700 |
| 56 | 2.8.1 | Project Budget Calculation |  | 1d | 2017-10-19 | 2017-10-20 | 46, 53 | -20.12d | 0d |  | Financier; Analyst; Paper | 16h | 4,860 |
| 57 | 2.8.2 | Budget reconciliation |  | 1d | 2017-10-20 | 2017-10-23 | 56 | -20.12d | 0d |  | Financier; Project curator | 8h | 1,920 |
| 58 | 2.8.3 | Changes in the size of the project budget |  | 4h | 2017-10-23 | 2017-10-23 | 57 | -20.12d | 0d |  | Financier | 4h | 960 |
| 59 | 2.8.4 | Approval of the budget |  | 4h | 2017-10-23 | 2017-10-24 | 58 | -20.12d | 0d |  | Financier; Project curator | 4h | 960 |
| 60 | 2.8.5 | Milestone: Project budget | milestone | 0d | 2017-10-24 | 2017-10-24 | 59 | 83.38d |  |  |  |  |  |
| 61 | 2.9 | **Development of the project plan** |  | 3d | 2017-10-24 | 2017-10-27 |  | -20.12d | 0d |  |  | 34.4h | 12,864 |
| 62 | 2.9.1 | Creating a Project Plan |  | 1d | 2017-10-24 | 2017-10-25 | 59 | -20.12d | 0d |  | Manager; Paper | 8h | 3,100 |
| 63 | 2.9.2 | Alignment of the plan by the main participants |  | 1d | 2017-10-25 | 2017-10-26 | 62 | -20.12d | 0d |  | System Architect [40%]; Analyst; Project curator; Coolers with water; Financier; Electricity [0.1%]; Paper; Designer [50%] | 23.2h | 8,344 |
| 64 | 2.9.3 | Approval of the plan with the customer |  | 1d | 2017-10-26 | 2017-10-27 | 63 | -20.12d | 0d |  | Manager [40%]; Project curator; Paper | 3.2h | 1,420 |
| 65 | 2.9.4 | Milestone: Project plan | milestone | 0d | 2017-10-27 | 2017-10-27 | 64 | 80.38d |  |  |  |  |  |
| 66 | 3 | **Execution** |  | 68.25d | 2017-11-13 | 2018-02-15 |  | -34.75d | 0d | start no earlier than 2017-11-13 |  | 938.3h | 211,250 |
| 67 | 3.1 | **Recruitment of project team** |  | 4d | 2017-11-13 | 2017-11-16 |  | -34.75d | 0d |  |  | 136h | 34,600 |
| 68 | 3.1.1 | Selection of participants for work in the project |  | 2d | 2017-11-13 | 2017-11-14 | 56 | -34.75d | 0d |  | Manager `s assistant | 16h | 1,600 |
| 69 | 3.1.2 | Mobilization of the team, holding a fact-finding meeting |  | 2d | 2017-11-14 | 2017-11-16 | 68 | -34.75d | 0d |  | Analyst; Paper; Designer [50%]; Coolers with water; Project curator; Manager; Programmer; System Architect; Tester; Technical writer; Financier; Electricity [0.1%] | 120h | 33,000 |
| 70 | 3.2 | **Development of Conceptual Design / Terms of Reference** |  | 6d | 2017-11-17 | 2017-11-24 |  | -34.75d | 0d |  |  | 56h | 15,500 |
| 71 | 3.2.1 | Development of Conceptual Design / Terms of Reference |  | 3d | 2017-11-17 | 2017-11-21 | 64, 69 | -34.75d | 0d |  | Technical writer; Paper | 24h | 6,300 |
| 72 | 3.2.2 | Harmonization of the Conceptual Design / Terms of Reference |  | 4h | 2017-11-21 | 2017-11-22 | 71 | -34.75d | 0d |  | Technical writer; Manager; Project curator | 8h | 2,400 |
| 73 | 3.2.3 | Correction of the remarks |  | 2d | 2017-11-22 | 2017-11-24 | 72 | -34.75d | 0d |  | Technical writer | 16h | 4,000 |
| 74 | 3.2.4 | Signing the Conceptual Design / Terms of Reference |  | 4h | 2017-11-24 | 2017-11-24 | 73 | 59.75d | 0d |  | Manager; Project curator | 8h | 2,800 |
| 75 | 3.2.5 | Milestone: Conceptual Design / Terms of Reference | milestone | 0d | 2017-11-24 | 2017-11-24 | 74 | 59.75d |  |  |  |  |  |
| 76 | 3.3 | **Development of the project architecture** |  | 2.5d | 2017-11-24 | 2017-11-28 |  | -34.75d | 0d |  |  | 34h | 8,860 |
| 77 | 3.3.1 | Preparation of materials |  | 1d | 2017-11-24 | 2017-11-27 | 73 | -34.75d | 0d |  | System Architect; Programmer; Paper | 16h | 3,660 |
| 78 | 3.3.2 | Milestone: Presentation of materials for the architectural solution | milestone | 0d | 2017-11-27 | 2017-11-27 | 77 | -34.75d | 0d |  |  |  |  |
| 79 | 3.3.3 | Meeting on architecture |  | 4h | 2017-11-27 | 2017-11-27 | 78 | -34.75d | 0d |  | System Architect; Manager; Designer [50%] | 10h | 3,040 |
| 80 | 3.3.4 | Milestone: Protocol of the meeting on architecture | milestone | 0h | 2017-11-27 | 2017-11-27 | 79 | 58.75d |  |  |  |  |  |
| 81 | 3.3.5 | Preparation of the project architecture |  | 1d | 2017-11-28 | 2017-11-28 | 79 | -34.75d | 0d |  | System Architect | 8h | 2,160 |
| 82 | 3.3.6 | Milestone: Architectural solution | milestone | 0d | 2017-11-28 | 2017-11-28 | 81 | 57.75d |  |  |  |  |  |

| ID | WBS | Task | Type | Duration | Start | Finish | Predecessors | Total slack | Free slack | Constraint | Resources | Work | Cost |
| --- | --- | --- | --- | --- | --- | --- | --- | --- | --- | --- | --- | --- | --- |
| 83 | 3.4 | **Creation of the Project Product** |  | 47d | 2017-11-29 | 2018-02-01 |  | -34.75d | 0d |  |  | 512h | 100,800 |
| 84 | 3.4.1 | Development of an algorithm for managing flowers orders |  | 7d | 2017-11-29 | 2017-12-07 | 81 | -34.75d | 0d |  | Programmer | 56h | 8,400 |
| 85 | 3.4.2 | Development of the main applications screens |  | 1mo | 2017-12-08 | 2018-01-04 | 84 | -34.75d | 0d |  | Designer [50%]; Programmer | 240h | 46,400 |
| 86 | 3.4.3 | Create an order history screen |  | 7d | 2018-01-05 | 2018-01-15 | 85 | -34.75d | 0d |  | Designer [50%]; Programmer | 84h | 16,240 |
| 87 | 3.4.4 | Create application settings screen |  | 5d | 2018-01-16 | 2018-01-22 | 86 | -34.75d | 0d |  | Designer [50%]; Programmer | 60h | 11,600 |
| 88 | 3.4.5 | Создание экрана информации о приложении и обратной связи |  | 1d | 2018-01-23 | 2018-01-23 | 87 | -34.75d | 0d |  | Designer [50%]; Programmer | 12h | 2,320 |
| 89 | 3.4.6 | Drawing UI, UX |  | 7d | 2018-01-24 | 2018-02-01 | 88 | -34.75d | 0d |  | Designer [50%] | 28h | 7,840 |
| 90 | 3.4.7 | **Development and coordination of documentation for the created product** |  | 3d | 2017-12-07 | 2017-12-12 |  | 9.25d |  |  |  | 32h | 8,000 |
| 91 | 3.4.7.1 | Development of an Explanatory Memorandum |  | 1d | 2017-12-07 | 2017-12-08 | 84 | 9.25d | 0d |  | Technical writer; Paper | 8h | 2,000 |
| 92 | 3.4.7.2 | Harmonization of the Explanatory Memorandum |  | 1d | 2017-12-08 | 2017-12-11 | 91 | 48.75d |  |  | Technical writer; Project curator | 8h | 2,000 |
| 93 | 3.4.7.3 | Milestone: Explanatory note | milestone | 0d | 2017-12-07 | 2017-12-07 | 84 | 50.75d |  |  |  |  |  |
| 94 | 3.4.7.4 | Development of operator's manual |  | 1d | 2017-12-08 | 2017-12-11 | 91 | 9.25d | 0d |  | Technical writer; Paper | 8h | 2,000 |
| 95 | 3.4.7.5 | Coordination of operator's manual |  | 1d | 2017-12-11 | 2017-12-12 | 94 | 47.75d | 0d |  | Technical writer; Project curator | 8h | 2,000 |
| 96 | 3.4.7.6 | Milestone: Operator's manual | milestone | 0d | 2017-12-12 | 2017-12-12 | 95 | 47.75d |  |  |  |  |  |
| 97 | 3.4.7.7 | Milestone: Complete sets of operational and technical documentation | milestone | 0d | 2017-12-11 | 2017-12-11 | 94 | 9.25d |  |  |  |  |  |
| 98 | 3.5 | **Testing a project product** |  | 8d | 2018-02-02 | 2018-02-13 |  | -34.75d | 0d |  |  | 144h | 39,180 |
| 99 | 3.5.1 | Development of strategy and test plan |  | 1d | 2018-02-02 | 2018-02-02 | 89 | -34.75d | 0d |  | Tester; Technical writer | 16h | 3,760 |
| 100 | 3.5.2 | Testing a project product |  | 3d | 2018-02-05 | 2018-02-07 | 99 | -34.75d | 0d |  | Tester | 24h | 5,280 |
| 101 | 3.5.3 | Harmonization of test protocols |  | 1d | 2018-02-07 | 2018-02-08 | 100 | -34.75d | 0d |  | Manager; Tester; Coolers with water; Project curator | 16h | 6,060 |
| 102 | 3.5.4 | Milestone: Testing protocols | milestone | 0d | 2018-02-08 | 2018-02-08 | 101 | -34.75d | 0d |  |  |  |  |
| 103 | 3.5.5 | Fixing problems |  | 3d | 2018-02-08 | 2018-02-13 | 101 | 2.75d |  | start no earlier than 2017-10-02 | Tester; Programmer; System Architect | 72h | 19,680 |
| 104 | 3.5.6 | Harmonization of remedial protocols |  | 1d | 2018-02-08 | 2018-02-09 | 102 | -34.75d | 0d |  | Tester; Analyst; Project curator | 16h | 4,400 |
| 105 | 3.5.7 | Milestone: Protocol for the elimination of comments | milestone | 0d | 2018-02-09 | 2018-02-09 | 104 | 4.75d |  |  |  |  |  |
| 106 | 3.6 | **Uploading the app on Google Play** |  | 3d | 2018-02-12 | 2018-02-14 |  | -34.75d | 0d |  |  | 52h | 11,120 |
| 107 | 3.6.1 | Sending an app to Google Play for review |  | 1d | 2018-02-12 | 2018-02-12 | 104, 97 | -34.75d | 0d |  | Programmer | 8h | 1,200 |
| 108 | 3.6.2 | Milestone: List of comments | milestone | 0d | 2018-02-12 | 2018-02-12 | 107 | -34.75d | 0d |  |  |  |  |
| 109 | 3.6.3 | Modifying the application |  | 1d | 2018-02-13 | 2018-02-13 | 108 | -34.75d | 0d |  | Technical writer; Programmer; Designer [50%]; Analyst; Tester | 36h | 8,720 |
| 110 | 3.6.4 | Resend the app on Google Play |  | 1d | 2018-02-14 | 2018-02-14 | 109 | -34.75d | 0d |  | Programmer | 8h | 1,200 |
| 111 | 3.6.5 | Milestone: Google Play Product Procurement Confirmation Report | milestone | 0d | 2018-02-14 | 2018-02-14 | 110 | 1.75d |  |  |  |  |  |

| ID | WBS | Task | Type | Duration | Start | Finish | Predecessors | Total slack | Free slack | Constraint | Deadline | Resources | Work | Cost |
| --- | --- | --- | --- | --- | --- | --- | --- | --- | --- | --- | --- | --- | --- | --- |
| 112 | 3.7 | **Acceptance of the product** |  | 0.25d | 2018-02-14 | 2018-02-15 |  | -34.75d | 0d |  |  |  | 4.3h | 1,190 |
| 113 | 3.7.1 | Conducting a meeting on the acceptance of the product |  | 1h | 2018-02-14 | 2018-02-15 | 110 | -34.75d | 0d |  |  | Analyst; CEO [25%]; Project curator | 1.25h | 330 |
| 114 | 3.7.2 | Create a product acceptance protocol |  | 1h | 2018-02-15 | 2018-02-15 | 113 | -34.75d | 0d |  |  | Technical writer; Manager [80%]; Paper | 1.8h | 530 |
| 115 | 3.7.3 | Signing of the Product Acceptance Protocol |  | 1h | 2018-02-15 | 2018-02-15 | 113 | 1.5d |  |  |  | CEO [25%]; Project curator; Analyst | 1.25h | 330 |
| 116 | 3.7.4 | Milestone: Product Acceptance Protocol | milestone | 0d | 2018-02-15 | 2018-02-15 | 114 | 1.5d |  |  |  |  |  |  |
| 117 | 4 | **Monitoring and Management** |  | 53d | 2017-10-02 | 2017-12-13 |  | 12d |  |  | 2017-12-31 |  | 19.2h | 6,720 |
| 118 | 4.1 | **General Change Management** |  | 53d | 2017-10-02 | 2017-12-13 |  | 12d |  |  |  |  |  |  |
| 119 | 4.1.1 | **Content management** |  | 51d | 2017-10-04 | 2017-12-13 |  | 12d |  |  |  |  |  |  |
| 120 | 4.1.1.1 | **Определение изменений в содержании и внесение корректив** |  | 51d | 2017-10-04 | 2017-12-13 |  | 12d |  |  |  |  |  |  |
| 121 | 4.1.1.1.1 | Determining changes in content and making adjustments 1 |  | 1d | 2017-10-04 | 2017-10-04 |  | 62d |  | start no earlier than 2017-10-04 |  |  |  |  |
| 122 | 4.1.1.1.2 | Determining changes in content and making adjustments 2 |  | 1d | 2017-10-18 | 2017-10-18 |  | 52d |  | start no earlier than 2017-10-18 |  |  |  |  |
| 123 | 4.1.1.1.3 | Determining changes in content and making adjustments 3 |  | 1d | 2017-11-01 | 2017-11-01 |  | 42d |  | start no earlier than 2017-11-01 |  |  |  |  |
| 124 | 4.1.1.1.4 | Determining changes in content and making adjustments 4 |  | 1d | 2017-11-15 | 2017-11-15 |  | 32d |  | start no earlier than 2017-11-15 |  |  |  |  |
| 125 | 4.1.1.1.5 | Determining changes in content and making adjustments 5 |  | 1d | 2017-11-29 | 2017-11-29 |  | 22d |  | start no earlier than 2017-11-29 |  |  |  |  |
| 126 | 4.1.1.1.6 | Determining changes in content and making adjustments 6 |  | 1d | 2017-12-13 | 2017-12-13 |  | 12d |  | start no earlier than 2017-12-13 |  |  |  |  |
| 127 | 4.1.2 | **Managing of the schedule** |  | 0.5d | 2017-10-02 | 2017-10-02 |  | 64.5d |  |  |  |  |  |  |
| 128 | 4.1.2.1 | Determination of the changes in the schedule |  | 4h | 2017-10-02 | 2017-10-02 |  | 64.5d |  |  |  |  |  |  |
| 129 | 4.1.2.2 | Making adjustments |  | 4h | 2017-10-02 | 2017-10-02 |  | 64.5d |  |  |  |  |  |  |
| 130 | 4.2 | **Reporting on execution** |  | 31d | 2017-11-01 | 2017-12-13 |  | 12d |  |  |  |  | 19.2h | 6,720 |
| 131 | 4.2.1 | **Встреча с Куратором проекта** |  | 31d | 2017-11-01 | 2017-12-13 |  | 12d |  |  |  |  | 19.2h | 6,720 |
| 132 | 4.2.1.1 | Meeting with Project Curator 1 |  | 1d | 2017-11-01 | 2017-11-01 |  | 42d |  | start no earlier than 2017-11-01 |  | Project curator | 8h | 3,200 |
| 133 | 4.2.1.2 | Meeting with Project Curator 2 |  | 1d | 2017-11-15 | 2017-11-15 |  | 32d |  | start no earlier than 2017-11-15 |  | Manager `s assistant [20%]; Project curator | 1.6h | 160 |
| 134 | 4.2.1.3 | Meeting with Project Curator 3 |  | 1d | 2017-11-29 | 2017-11-29 |  | 22d |  | start no earlier than 2017-11-29 |  | Project curator; Manager [20%] | 1.6h | 560 |
| 135 | 4.2.1.4 | Meeting with Project Curator 4 |  | 1d | 2017-12-13 | 2017-12-13 |  | 12d |  | start no earlier than 2017-12-13 |  | Project curator; Manager | 8h | 2,800 |

| ID | WBS | Task | Type | Duration | Start | Finish | Predecessors | Total slack | Free slack | Deadline | Resources | Work | Cost |
| --- | --- | --- | --- | --- | --- | --- | --- | --- | --- | --- | --- | --- | --- |
| 136 | 5 | **Closing** |  | 1.5d | 2018-02-15 | 2018-02-16 |  | -34.75d | 0d | 2017-12-31 |  | 37h | 23,460 |
| 137 | 5.1 | Preparation and approval of the final report on the results of the IT project |  | 4h | 2018-02-15 | 2018-02-15 | 114 | -34.75d | 0d |  | Project curator; Analyst; Manager; Financier; Technical writer; Paper; Coolers with water | 16h | 6,480 |
| 138 | 5.2 | Transfer of project documents (originals) to the archive |  | 4h | 2018-02-15 | 2018-02-16 | 137 | -34.25d | 0d |  | Analyst | 4h | 1,320 |
| 139 | 5.3 | Transfer of project documents (electronic documents) to the knowledge base of the Project Office |  | 4h | 2018-02-15 | 2018-02-16 | 137 | -34.25d | 0d |  | Manager | 4h | 1,400 |
| 140 | 5.4 | Development and coordination of the project budget execution |  | 4h | 2018-02-15 | 2018-02-16 | 137 | -34.75d | 0d |  | Analyst; Paper; CEO [25%]; Electricity [0.1%]; Financier | 9h | 13,300 |
| 141 | 5.5 | Milestone: The order to close the project | milestone | 0d | 2018-02-16 | 2018-02-16 | 140, 139, 138 | -34.25d | 0d |  |  |  |  |
| 142 | 5.6 | Development and approval of an official memo for the payment of bonuses |  | 4h | 2018-02-16 | 2018-02-16 | 140 | -34.75d | 0d |  | Financier | 4h | 960 |
